# Preliminary Schedule for Bid - 04.15.2025.pdf

Schedule from MS Project, 2025-04-15 to 2025-08-06.

## Calendars

- Standard: Mon-Fri 08:00-12:00, 13:00-17:00; Sat-Sun off.

## Schedule

| ID | WBS | Task | Type | Duration | Start | Finish | Predecessors | Total slack | Free slack |
| --- | --- | --- | --- | --- | --- | --- | --- | --- | --- |
| 1 | 1 | **Unit 4 Breaching Replacement** |  | 82d | 2025-04-15 | 2025-08-06 |  | 0d |  |
| 2 | 1.1 | Bid Submittal |  | 1d | 2025-04-15 | 2025-04-15 |  | 25d | 0d |
| 3 | 1.2 | Contract Award |  | 2w | 2025-04-16 | 2025-04-29 | 2 | 25d | 0d |
| 4 | 1.3 | **Structural** |  | 66d | 2025-04-30 | 2025-07-30 |  | 5d |  |
| 5 | 1.3.1 | Structural Detailing |  | 3w | 2025-04-30 | 2025-05-20 | 3 | 25d | 0d |
| 6 | 1.3.2 | Approval |  | 2w | 2025-05-21 | 2025-06-03 | 5 | 25d | 0d |
| 7 | 1.3.3 | Shop Drawings |  | 2w | 2025-06-04 | 2025-06-17 | 6 | 25d | 0d |
| 8 | 1.3.4 | Fabrication |  | 1w | 2025-06-18 | 2025-06-24 | 7 | 25d | 0d |
| 9 | 1.3.5 | Epoxy Paint |  | 1w | 2025-06-25 | 2025-07-01 | 8 | 8d | 0d |
| 10 | 1.3.6 | Deliver to Site |  | 1d | 2025-07-02 | 2025-07-02 | 9 | 8d | 0d |
| 11 | 1.3.7 | Erection |  | 5d | 2025-07-24 | 2025-07-30 | 17 | 2d | 0d |
| 12 | 1.4 | **Mechanical** |  | 71d | 2025-04-30 | 2025-08-06 |  | 0d |  |
| 13 | 1.4.1 | Pipe Fabrication |  | 14d | 2025-04-30 | 2025-05-19 | 3 | 45d |  |
| 14 | 1.4.2 | Scaffolding | manual | 4d | 2025-07-15 | 2025-07-18 | 8 |  |  |
| 15 | 1.4.3 | Mobilization | manual | 1d | 2025-07-18 | 2025-07-18 |  |  |  |
| 16 | 1.4.4 | Birla LOTO and Blanking | manual | 2d | 2025-07-19 | 2025-07-21 |  |  |  |
| 17 | 1.4.5 | Demolition | manual | 3d | 2025-07-21 | 2025-07-23 |  |  |  |
| 18 | 1.4.6 | Mechanical Installation |  | 4d | 2025-07-28 | 2025-07-31 | 11FS-3d | 2d | 0d |
| 19 | 1.4.7 | Birla Remove LOTO and Blanking | manual | 2d | 2025-08-01 | 2025-08-04 | 18 |  |  |
| 20 | 1.4.8 | Demobilization | manual | 1d | 2025-08-01 | 2025-08-01 |  |  |  |
| 21 | 1.4.9 | Scaffold Tare Down | manual | 4d | 2025-08-01 | 2025-08-06 |  |  |  |
