# Project Schedule 07.30.2025

Schedule from MS Project, 2025-07-30 to 2025-09-23.

## Calendars

- Standard: Mon-Fri 08:00-12:00, 13:00-17:00; Sat-Sun off.

## Schedule

| ID | WBS | Task | Type | Duration | Start | Finish | Predecessors | Total slack |
| --- | --- | --- | --- | --- | --- | --- | --- | --- |
| 1 | 1 | **Unit 4 Breaching Project** |  | 40d | 2025-07-30 | 2025-09-23 |  | 0d |
| 2 | 1.1 | Pipe Fabrication | manual | 31d | 2025-07-30 | 2025-09-10 |  |  |
| 3 | 1.2 | Structural Fabrication | manual | 31d | 2025-07-30 | 2025-09-10 |  |  |
| 4 | 1.3 | Scaffold Errection | manual | 7d | 2025-09-02 | 2025-09-10 |  |  |
| 5 | 1.4 | Site Mobilization | manual | 1d | 2025-09-05 | 2025-09-05 |  |  |
| 6 | 1.5 | Demolition |  | 3d | 2025-09-08 | 2025-09-10 | 5 | 9d |
| 7 | 1.6 | Structural Assembly & Install |  | 5d | 2025-09-11 | 2025-09-17 | 3 | 4d |
| 8 | 1.7 | Piping Inatallation |  | 4d | 2025-09-11 | 2025-09-16 | 2 | 0d |
| 9 | 1.8 | Site Demobilization |  | 1d | 2025-09-17 | 2025-09-17 | 8 | 4d |
| 10 | 1.9 | Scaffold Removal |  | 5d | 2025-09-17 | 2025-09-23 | 8 | 0d |
