# Gantt

Schedule from MS Project XML, 2025-07-30 to 2025-09-30, 24 hours a day, A marks actual dates.

## Calendars

- 30 - imported: Mon-Sun 00:00-00:00.

## Resources

| Resource |
| --- |
| Anderson, Sean |
| Arsenault, Jamie D |
| Atkinson, Steven K |
| Baird, Nick |
| Baker, Sean |
| Beaudoin, Mat |
| Bell, Joseph C |
| Benko, Philip S |
| Bennett, David |
| Bishop, Jay S |
| Boutin, Chad R |
| Burke, Sonny |
| Butler, Mike T |
| Campbell, Cole |
| Campbell, Glen S |
| Campbell, Owen |
| Campbell, Roddy |
| Casey, Bryon |
| Cassivi, Corey VL |
| Charles, Leroy |
| Chrisjohn, Fletcher |
| Clarke, Paul |
| Coetzee, Dirk |
| Collins, Dan |
| Coville, Mark D |
| Crockett, Joe H |
| Crossley, Zachary S |
| Crouch, Hayden |
| Dade, Cody B |
| Dalby, Alex D |
| DeKoning, Brandon L |
| DeKoning, Hendrick M |
| DePoorter, Ryan P |
| Desmarchais, Cody J |
| Desmarchais, Danielle |
| Ealaschuk, Aaron |
| Ehrhardt, Gavin |
| Elliott, Ken W |
| Evans, Darryl W |
| Ferrier, T. Jacob I |
| Field, Kevin J |
| Fisher, Matt |
| Foreman, Darcy W |
| Freeman, Rory |
| Fugard, Charlie L |
| Fulbrook, Mike S |
| Garner, Benjamin J |
| Geerts, Kevin M |
| Ghent, Jed |
| Ghent, Josh |
| Gibbons, Nathaniel |
| Haentjens, Koen |
| Hall-Stainthorp, Dillen |
| Hammond, Blaine H |
| Hammond, Brian M |
| Haydt, Roger L |
| Hitchon, Adam L |
| Huffman-Turcotte,Taylor |
| Hughes, Andrew L |
| Ireland, Mark D |
| Jacob, Jordan |
| Jeens, Connor |
| Johnson, Evan D |
| Jones, Lucas |
| Kazmierczak, Peter |
| Kenline, Josh |
| Kerkhof, Clinton |
| Kilbourne, Sean A |
| Kolomaya, Jacob J |
| Kraeling, Ryley |
| Lawrence, Ryan |
| Lawton, Terry |
| Livesey, Ben |
| Long, Hunter |
| Lusk, Glenn |
| MacInnis, David A |
| Magnus, Josh |
| Malec, Deakin |
| Mann, Blaise |
| Mann, Mackenzie J |
| Massolin, Geremia |
| Mathers, Lloyd |
| Matzig, Davin R |
| Matzig, Robert J |
| Messier, Robert |
| Misner, Spencer E |
| Mudge, Bailey J |
| Mullins, Ian |
| Niven, Corey A |
| Packard, Zack |
| Palmer, Ian J |
| Panton, Owen |
| Payne, Dale R |
| Perry, Melissa |
| Price, Travis B |
| Pridmore, Logan |
| Punchak, Michael C |
| Quintyn, Beau |
| Rae, Trent |
| Rassaun Kimberlite |
| Ratcliffe, Jayson |
| Roussy, Martin |
| Saunders, Braedon |
| Saunders, Evan JP |
| Saunders, Keith J |
| Saunders, Kevin D |
| Saunders, M.J. Todd |
| Saunders, Michael K |
| Saunders, Nadia AM |
| Saunders, Sharon |
| Schira, Sherri |
| Schweyer, Evan |
| Sensabaugh, Madison J |
| Services, Web |
| Sheehan, Nicholas A |
| Sheppard, Shaelee |
| Simon, Glenn A |
| Skuce, Donald R |
| Slade, Robert H |
| Sloot, Evan |
| Smith, C. Carl |
| Smith, Morgan |
| Smith, Shawn P |
| Sostar, Quinn |
| Spear, Adam |
| Stackhouse, Dan R |
| Staley, Brian G |
| Stewart, Jake DJ |
| Stiller, Kyle |
| Stratford, Emma |
| Stuckless, Trevor |
| Taylor, Elliott E |
| Taylor, Stuart |
| Topp, Jason D |
| Turcotte, Paul J |
| Vanderzwan, Chris |
| Vlasov, John |
| Waters, J. Scott |
| Watson, Monica |
| Wells, Jason T |
| Wiersma, Phillip P |
| Wilson, Eric J.A. |
| Wood, Matthew P |
| Yardley, Tim |
| Yarek, Matthew A |
| Yokom, Kara |

## Schedule

| ID | Task | Duration | Start | Finish | Predecessors | Remaining | Constraint | Work |
| --- | --- | --- | --- | --- | --- | --- | --- | --- |
| 1 | Unit 4 Breeching Project | 62d | 2025-07-30 A | 2025-09-30 |  | 62d | start no earlier than 2025-07-23 | 24h |
| 2 | Piping Fabrication | 42d | 2025-07-30 A | 2025-09-10 |  | 42d |  | 1416h |
| 3 | Structural Fabrication | 42d | 2025-07-30 A | 2025-09-10 |  | 42d |  | 1080h |
| 4 | Scaffolding Erection | 7d | 2025-09-02 A | 2025-09-09 |  | 7d | start no earlier than 2025-09-02 | 1080h |
| 5 | Site Mobilization | 1d | 2025-09-05 A | 2025-09-06 |  | 1d | start no earlier than 2025-09-05 | 168h |
| 6 | Demolition | 3d | 2025-09-08 A | 2025-09-11 | 5 | 3d | start no earlier than 2025-09-08 | 24h |
| 7 | Structural Assembly and Installation | 5d | 2025-09-10 A | 2025-09-15 | 6SS, 3 | 5d | start no earlier than 2025-09-09 | 72h |
| 8 | Piping Installation | 4d | 2025-09-15 A | 2025-09-19 | 7, 2 | 4d | start no earlier than 2025-09-15 | 120h |
| 9 | Site Demobilization | 1d | 2025-09-19 A | 2025-09-20 | 8 | 1d | start no earlier than 2025-09-19 | 96h |
| 10 | Scaffold Removal | 5d | 2025-09-19 A | 2025-09-24 | 8 | 5d | start no earlier than 2025-09-19 | 24h |
